# FlyDreamAir

How a schedule from ProjectLibre changed from version to version. A marks actual dates.

## Version 1 (saved 2026-04-17, file FlyDreamAir2.pod)

Note of the change: The Latest Project Libre

| ID | WBS | Task | Duration | Start | Finish | Predecessors | Complete | Constraint |
| --- | --- | --- | --- | --- | --- | --- | --- | --- |
| 1 | 1 | **FlyDreamAir: Lounge Management System** | 53d | 2026-03-16 | 2026-05-27 |  | 46% |  |
| 2 | 1.1 | **[Phase 1] Initiation** | 5d | 2026-03-16 | 2026-03-23 |  | 100% |  |
| 3 |  | Formulate Initial Team Roles | 1d | 2026-03-16 | 2026-03-16 |  | 100% |  |
| 4 |  | Identify Project Stakeholders | 1d | 2026-03-16 | 2026-03-16 |  | 100% |  |
| 5 |  | Develop Business Case & NPV | 1d | 2026-03-17 | 2026-03-17 | 4 | 100% |  |
| 6 |  | Draft & Authorise Project Charter | 3d | 2026-03-18 | 2026-03-20 | 5 | 100% |  |
| 7 |  | [Milestone 1] Project Authorisation | 0d | 2026-03-23 | 2026-03-23 | 6 | 100% |  |
| 8 | 1.2 | **[Phase 2] Planning** | 10d | 2026-03-23 | 2026-04-06 |  | 100% | start no earlier than 2026-03-23 |
| 9 |  | Project Scope | 5d | 2026-03-23 | 2026-03-27 |  | 100% |  |
| 10 |  | WBS & Dictionary | 5d | 2026-03-30 | 2026-04-03 | 9 | 100% |  |
| 11 |  | Risk Registry | 5d | 2026-03-30 | 2026-04-03 | 9 | 100% |  |
| 12 |  | Cost & Effort Estimate | 5d | 2026-03-30 | 2026-04-03 | 9 | 100% |  |
| 13 |  | [Milestone 2] Scope Approval | 0d | 2026-04-06 | 2026-04-06 | 12 | 100% |  |
| 14 | 1.3 | **[Phase 3] Design** | 10d | 2026-04-06 | 2026-04-17 |  | 81% | start no earlier than 2026-04-06 |
| 15 |  | Database Schema Design | 3d | 2026-04-06 | 2026-04-08 |  | 100% |  |
| 16 |  | UI/UX Wireframe & Style Guide | 10d | 2026-04-06 | 2026-04-17 |  | 70% |  |
| 17 |  | System Architecture Design | 3d | 2026-04-06 | 2026-04-08 |  | 100% |  |
| 18 |  | [Milestone 3] Design Approval | 0d | 2026-04-08 | 2026-04-08 | 17 |  |  |
| 19 | 1.4 | **[Phase 4] Development** | 20d | 2026-04-20 | 2026-05-15 |  |  | start no earlier than 2026-04-20 |
| 20 | 1.4.1 | **Sprint Setup: Infrastructure** | 2d | 2026-04-20 | 2026-04-21 |  |  |  |
| 21 |  | Development Environment | 1d | 2026-04-20 | 2026-04-20 |  |  |  |
| 22 |  | Database Seeding | 1d | 2026-04-21 | 2026-04-21 | 21 |  |  |
| 23 | 1.4.2 | **Sprint 1: Foundation** | 4d | 2026-04-22 | 2026-04-27 |  |  | start no earlier than 2026-04-22 |
| 24 |  | [FR-01] Identity & Access | 2d | 2026-04-22 | 2026-04-23 |  |  |  |
| 25 |  | [FR-8] Data Management | 2d | 2026-04-24 | 2026-04-27 | 24 |  |  |
| 26 | 1.4.3 | **Sprint 2: Core Logic** | 7d | 2026-04-28 | 2026-05-06 |  |  | start no earlier than 2026-04-28 |
| 27 |  | [FR-02] Tiered Eligibility | 2d | 2026-04-28 | 2026-04-29 |  |  |  |
| 28 |  | [FR-03] Six-Month Gate | 2d | 2026-04-30 | 2026-05-01 | 27 |  |  |
| 29 |  | [FR-05] Occupancy Logic | 3d | 2026-05-04 | 2026-05-06 | 28 |  |  |
| 30 | 1.4.4 | **Sprint 3: Transactional Functions** | 7d | 2026-05-07 | 2026-05-15 |  |  | start no earlier than 2026-05-07 |
| 31 |  | [FR-04] Booking Lifecycle | 3d | 2026-05-07 | 2026-05-11 |  |  |  |
| 32 |  | [FR-06] Payment Processing | 2d | 2026-05-12 | 2026-05-13 | 31 |  |  |
| 33 |  | [FR-07] QR Verification/Generation | 2d | 2026-05-14 | 2026-05-15 | 32 |  |  |
| 34 |  | [Milestone 4] Development Complete | 0d | 2026-05-15 | 2026-05-15 | 20, 23, 26, 30 |  |  |
| 35 | 1.5 | **[Phase 5] Testing/Q&A** | 5d | 2026-05-18 | 2026-05-22 |  |  | start no earlier than 2026-05-18 |
| 36 |  | Functional Testing | 2d | 2026-05-18 | 2026-05-19 |  |  |  |
| 37 |  | Performance & Accessibility Checks | 1d | 2026-05-20 | 2026-05-20 | 36 |  |  |
| 38 |  | Pen Testing/ Bug Fixing | 2d | 2026-05-21 | 2026-05-22 | 37 |  |  |
| 39 |  | [Milestone 5] Testing Complete | 0d | 2026-05-22 | 2026-05-22 | 38 |  |  |
| 40 | 1.6 | **[Phase 6] Closing** | 3d | 2026-05-25 | 2026-05-27 |  |  | start no earlier than 2026-05-25 |
| 41 |  | Project Deployment | 1d | 2026-05-25 | 2026-05-25 |  |  |  |
| 42 |  | Staff Training | 1d | 2026-05-26 | 2026-05-26 | 41 |  |  |
| 43 |  | Final Report | 1d | 2026-05-27 | 2026-05-27 | 42 |  |  |
| 44 |  | [Milestone 6] Project Complete | 0d | 2026-05-27 | 2026-05-27 | 43 |  |  |

## Version 2 (saved 2026-04-24, file FlyDreamAir-V2.pod)

Note of the change: docs: renamed FlyDreamAir pod files, reset ~Baseline to default.

Last finish stays 2026-05-27. Complete tasks 12 → 0.

Changed:

| ID | Task | Start | Finish | Duration | Complete | Predecessors | Other |
| --- | --- | --- | --- | --- | --- | --- | --- |
| 1 | **FlyDreamAir: Lounge Management System** |  |  |  | 46% → 0% |  | baseline start none → 2026-03-16; baseline finish none → 2026-05-27 |
| 2 | **1 Phase: Initiation** |  | 2026-03-23 → 2026-03-20 (-3d) |  | 100% → 0% |  | was named [Phase 1] Initiation; baseline start none → 2026-03-16; baseline finish none → 2026-03-20 |
| 3 | 1.1 Formulate Initial Team Roles |  |  |  | 100% → 0% |  | was named Formulate Initial Team Roles; baseline start none → 2026-03-16; baseline finish none → 2026-03-16 |
| 4 | 1.2 Identify Project Stakeholders |  |  |  | 100% → 0% |  | was named Identify Project Stakeholders; baseline start none → 2026-03-16; baseline finish none → 2026-03-16 |
| 5 | 1.3 Develop Business Case & NPV |  |  |  | 100% → 0% |  | was named Develop Business Case & NPV; baseline start none → 2026-03-17; baseline finish none → 2026-03-17 |
| 6 | 1.4 Draft & Authorise Project Charter |  |  |  | 100% → 0% |  | was named Draft & Authorise Project Charter; baseline start none → 2026-03-18; baseline finish none → 2026-03-20 |
| 7 | 1.5 Milestone: Project Authorisation | 2026-03-23 → 2026-03-20 (-3d) | 2026-03-23 → 2026-03-20 (-3d) |  | 100% → 0% |  | was named [Milestone 1] Project Authorisation; baseline start none → 2026-03-20; baseline finish none → 2026-03-20 |
| 8 | **2 Phase: Planning** |  | 2026-04-06 → 2026-04-03 (-3d) |  | 100% → 0% |  | was named [Phase 2] Planning; constraint start no earlier than 2026-03-23 → none; baseline start none → 2026-03-23; baseline finish none → 2026-04-03 |
| 9 | 2.1 Project Scope |  |  |  | 100% → 0% | none → 7 | was named Project Scope; baseline start none → 2026-03-23; baseline finish none → 2026-03-27 |
| 10 | 2.2 WBS & Dictionary |  |  |  | 100% → 0% |  | was named WBS & Dictionary; baseline start none → 2026-03-30; baseline finish none → 2026-04-03 |
| 11 | 2.3 Risk Registry |  |  |  | 100% → 0% |  | was named Risk Registry; baseline start none → 2026-03-30; baseline finish none → 2026-04-03 |
| 12 | 2.4 Cost & Effort Estimate |  |  |  | 100% → 0% |  | was named Cost & Effort Estimate; baseline start none → 2026-03-30; baseline finish none → 2026-04-03 |
| 13 | 2.5 Milestone: Scope Approval | 2026-04-06 → 2026-04-03 (-3d) | 2026-04-06 → 2026-04-03 (-3d) |  | 100% → 0% |  | was named [Milestone 2] Scope Approval; baseline start none → 2026-04-03; baseline finish none → 2026-04-03 |
| 14 | **3 Phase: Design** |  |  |  | 81% → 0% |  | was named [Phase 3] Design; constraint start no earlier than 2026-04-06 → none; baseline start none → 2026-04-06; baseline finish none → 2026-04-17 |
| 15 | 3.1 Database Schema Design |  | 2026-04-08 → 2026-04-10 (+2d) | 3d → 5d | 100% → 0% | none → 13 | was named Database Schema Design; baseline start none → 2026-04-06; baseline finish none → 2026-04-10 |
| 16 | 3.2 UI/UX Wireframe & Style Guide |  |  |  | 70% → 0% | none → 13 | was named UI/UX Wireframe & Style Guide; baseline start none → 2026-04-06; baseline finish none → 2026-04-17 |
| 17 | 3.3 System Architecture Design |  | 2026-04-08 → 2026-04-10 (+2d) | 3d → 5d | 100% → 0% | none → 13 | was named System Architecture Design; baseline start none → 2026-04-06; baseline finish none → 2026-04-10 |
| 18 | 3.4 Milestone: Design Approval | 2026-04-08 → 2026-04-17 (+9d) | 2026-04-08 → 2026-04-17 (+9d) |  |  | 17 → 15, 16, 17 | was named [Milestone 3] Design Approval; baseline start none → 2026-04-17; baseline finish none → 2026-04-17 |
| 19 | **4 Phase: Development** |  |  |  |  |  | was named [Phase 4] Development; constraint start no earlier than 2026-04-20 → none; baseline start none → 2026-04-20; baseline finish none → 2026-05-15 |
| 20 | **4.1 Sprint Setup: Infrastructure** |  |  |  |  |  | was named Sprint Setup: Infrastructure; baseline start none → 2026-04-20; baseline finish none → 2026-04-21 |
| 21 | 4.1.1 Development Environment |  |  |  |  | none → 18 | was named Development Environment; baseline start none → 2026-04-20; baseline finish none → 2026-04-20 |
| 22 | 4.1.2 Database Seeding |  |  |  |  |  | was named Database Seeding; baseline start none → 2026-04-21; baseline finish none → 2026-04-21 |
| 23 | **4.2 Sprint 1: Foundation** |  |  |  |  |  | was named Sprint 1: Foundation; constraint start no earlier than 2026-04-22 → none; baseline start none → 2026-04-22; baseline finish none → 2026-04-27 |
| 24 | 4.2.1 [FR-01] Identity & Access |  |  |  |  | none → 22 | was named [FR-01] Identity & Access; baseline start none → 2026-04-22; baseline finish none → 2026-04-23 |
| 25 | 4.2.2 [FR-8] Data Management |  |  |  |  |  | was named [FR-8] Data Management; baseline start none → 2026-04-24; baseline finish none → 2026-04-27 |
| 26 | **4.3 Sprint 2: Core Logic** |  |  |  |  |  | was named Sprint 2: Core Logic; constraint start no earlier than 2026-04-28 → none; baseline start none → 2026-04-28; baseline finish none → 2026-05-06 |
| 27 | 4.3.1 [FR-02] Tiered Eligibility |  |  |  |  | none → 25 | was named [FR-02] Tiered Eligibility; baseline start none → 2026-04-28; baseline finish none → 2026-04-29 |
| 28 | 4.3.2 [FR-03] Six-Month Gate |  |  |  |  |  | was named [FR-03] Six-Month Gate; baseline start none → 2026-04-30; baseline finish none → 2026-05-01 |
| 29 | 4.3.3 [FR-05] Occupancy Logic |  |  |  |  |  | was named [FR-05] Occupancy Logic; baseline start none → 2026-05-04; baseline finish none → 2026-05-06 |
| 30 | **4.4 Sprint 3: Transactional Functions** |  |  |  |  |  | was named Sprint 3: Transactional Functions; constraint start no earlier than 2026-05-07 → none; baseline start none → 2026-05-07; baseline finish none → 2026-05-15 |
| 31 | 4.4.1 [FR-04] Booking Lifecycle |  |  |  |  | none → 29 | was named [FR-04] Booking Lifecycle; baseline start none → 2026-05-07; baseline finish none → 2026-05-11 |
| 32 | 4.4.2 [FR-06] Payment Processing |  |  |  |  |  | was named [FR-06] Payment Processing; baseline start none → 2026-05-12; baseline finish none → 2026-05-13 |
| 33 | 4.4.3 [FR-07] QR Verification/Generation |  |  |  |  |  | was named [FR-07] QR Verification/Generation; baseline start none → 2026-05-14; baseline finish none → 2026-05-15 |
| 34 | 4.5 Milestone: Development Complete |  |  |  |  |  | was named [Milestone 4] Development Complete; baseline start none → 2026-05-15; baseline finish none → 2026-05-15 |
| 35 | **5 Phase: Testing/Q&A** |  |  |  |  |  | was named [Phase 5] Testing/Q&A; constraint start no earlier than 2026-05-18 → none; baseline start none → 2026-05-18; baseline finish none → 2026-05-22 |
| 36 | 5.1 Functional Testing |  |  |  |  | none → 34 | was named Functional Testing; baseline start none → 2026-05-18; baseline finish none → 2026-05-19 |
| 37 | 5.2 Performance & Accessibility Checks |  |  |  |  |  | was named Performance & Accessibility Checks; baseline start none → 2026-05-20; baseline finish none → 2026-05-20 |
| 38 | 5.3 Pen Testing/ Bug Fixing |  |  |  |  |  | was named Pen Testing/ Bug Fixing; baseline start none → 2026-05-21; baseline finish none → 2026-05-22 |
| 39 | 5.4 Milestone: Testing Complete |  |  |  |  |  | was named [Milestone 5] Testing Complete; baseline start none → 2026-05-22; baseline finish none → 2026-05-22 |
| 40 | **6 Phase: Closing** |  |  |  |  |  | was named [Phase 6] Closing; constraint start no earlier than 2026-05-25 → none; baseline start none → 2026-05-25; baseline finish none → 2026-05-27 |
| 41 | 6.1 Project Deployment |  |  |  |  | none → 39 | was named Project Deployment; baseline start none → 2026-05-25; baseline finish none → 2026-05-25 |
| 42 | 6.2 Staff Training |  |  |  |  |  | was named Staff Training; baseline start none → 2026-05-26; baseline finish none → 2026-05-26 |
| 43 | 6.3 Final Report |  |  |  |  |  | was named Final Report; baseline start none → 2026-05-27; baseline finish none → 2026-05-27 |
| 44 | 6.4 Milestone: Project Complete |  |  |  |  |  | was named [Milestone 6] Project Complete; baseline start none → 2026-05-27; baseline finish none → 2026-05-27 |
